Schedule from MS Project, 2018-04-19 to 2018-05-07.

## Calendars

- 标准: Mon-Fri 08:00-12:00, 13:00-17:00; Sat-Sun off. Exceptions (off unless hours are given): 2018-04-21 08:00-12:00, 13:00-17:00, 2018-04-28 08:00-12:00, 13:00-17:00 (工作日), 2018-05-05 08:00-12:00, 13:00-17:00 (工作时间).

## Resources

| Resource |
| --- |
| 郝亮 |
| 杨宁 |
| 高勇 |
| 邵海媛 |

## Schedule

| ID | WBS | Task | Duration | Start | Finish | Predecessors | Total slack | Free slack | Constraint | Resources | Work |
| --- | --- | --- | --- | --- | --- | --- | --- | --- | --- | --- | --- |
| 2 | 1 | **门禁系统研发** | 16d | 2018-04-19 08:00 | 2018-05-07 17:00 |  | 0d |  |  |  | 224h |
| 3 | 1.1 | **Web端研发及测试** | 7d | 2018-04-19 08:00 | 2018-04-26 17:00 |  | 9d |  |  |  | 56h |
| 4 | 1.1.1 | **门禁设备服务** | 1d | 2018-04-19 08:00 | 2018-04-19 17:00 |  | 15d |  |  |  | 8h |
| 5 | 1.1.1.1 | 启动门禁服务、设备在线检测、设置心跳时间 | 0.5d | 2018-04-19 08:00 | 2018-04-19 12:00 |  | 18.7d | 0d | start no earlier than 2018-04-19 08:00 | 郝亮 | 4h |
| 6 | 1.1.1.2 | 设置超时时间、修改端口、设置二维码更新时间 | 0.5d | 2018-04-19 13:00 | 2018-04-19 17:00 | 5 | 15d |  | start no earlier than 2018-04-19 08:00 | 郝亮 | 4h |
| 7 | 1.1.2 | **APP服务接口** | 1.5d | 2018-04-20 08:00 | 2018-04-21 12:00 |  | 13.5d |  |  |  | 16h |
| 8 | 1.1.2.1 | 获取白名单及权限 | 0.5d | 2018-04-20 08:00 | 2018-04-20 12:00 |  | 14.5d |  | start no earlier than 2018-04-20 08:00 | 郝亮 | 4h |
| 9 | 1.1.2.2 | 扫码开门 | 0.5d | 2018-04-20 08:00 | 2018-04-20 12:00 |  | 14.5d |  | start no earlier than 2018-04-20 08:00 | 郝亮 | 4h |
| 10 | 1.1.2.3 | 蓝牙开门回调 | 0.5d | 2018-04-21 08:00 | 2018-04-21 12:00 |  | 13.5d |  | start no earlier than 2018-04-21 08:00 | 郝亮 | 4h |
| 11 | 1.1.2.4 | 生成访客URL | 0.5d | 2018-04-21 08:00 | 2018-04-21 12:00 |  | 13.5d |  | start no earlier than 2018-04-21 08:00 | 郝亮 | 4h |
| 12 | 1.1.3 | **门禁管理系统** | 3d | 2018-04-23 08:00 | 2018-04-25 17:00 |  | 10d |  |  |  | 24h |
| 13 | 1.1.3.1 | Oauth登录、身份验证、权限获取 | 0.5d | 2018-04-23 08:00 | 2018-04-23 12:00 |  | 12.5d |  | start no earlier than 2018-04-23 08:00 | 郝亮 | 4h |
| 14 | 1.1.3.2 | 门禁设备管理 | 0.5d | 2018-04-23 08:00 | 2018-04-23 12:00 | 15 | 12.5d |  | start no earlier than 2018-04-23 08:00 | 郝亮 | 4h |
| 15 | 1.1.3.3 | 白名单管理 | 0.5d | 2018-04-24 13:00 | 2018-04-24 17:00 |  | 11d |  | start no earlier than 2018-04-24 13:00 | 郝亮 | 4h |
| 16 | 1.1.3.4 | 访客管理 | 0.5d | 2018-04-24 08:00 | 2018-04-24 13:00 | 18 | 11.5d |  | finish no earlier than 2018-04-24 13:00 | 郝亮 | 4h |
| 17 | 1.1.3.5 | 开门日志 | 0.5d | 2018-04-25 13:00 | 2018-04-25 17:00 | 14 | 10d |  | start no earlier than 2018-04-25 13:00 | 郝亮 | 4h |
| 18 | 1.1.3.6 | 生成访客URL | 0.5d | 2018-04-25 13:00 | 2018-04-25 17:00 |  | 10d |  | start no earlier than 2018-04-25 13:00 | 郝亮 | 4h |
| 19 | 1.1.4 | TYMics整合 | 1d | 2018-04-26 08:00 | 2018-04-26 17:00 |  | 9d |  | start no earlier than 2018-04-26 08:00 | 郝亮 | 8h |
| 20 | 1.2 | IOS端研发及测试 | 4d | 2018-04-23 08:00 | 2018-04-26 17:00 |  | 9d |  | start no earlier than 2018-04-23 08:00 | 杨宁 | 32h |
| 21 | 1.3 | 安卓端研发及测试 | 4d | 2018-04-23 08:00 | 2018-04-26 17:00 |  | 9d |  | start no earlier than 2018-04-23 08:00 | 高勇 | 32h |
| 22 | 1.4 | 系统集成测试 | 2d | 2018-04-27 08:00 | 2018-04-28 17:00 |  | 7d |  | start no earlier than 2018-04-27 08:00 | 郝亮; 高勇; 杨宁 | 48h |
| 23 | 1.5 | QC测试 | 4d | 2018-05-02 08:00 | 2018-05-05 17:00 |  | 1d |  | start no earlier than 2018-05-02 08:00 | 邵海媛 | 32h |
| 24 | 1.6 | 系统部署正式环境 | 1d | 2018-05-07 08:00 | 2018-05-07 17:00 |  | 0d |  | start no earlier than 2018-05-07 08:00 | 郝亮; 高勇; 杨宁 | 24h |
